# Practica 1 Parte 2

Schedule from MS Project, 2020-11-13 to 2021-01-07, costs in €.

## Calendars

- Calendario de Huelva: Mon-Fri 09:00-13:00, 15:00-19:00; Sat-Sun off. Exceptions (off unless hours are given): 2020-12-07 (Dia la constitución), 2020-12-08 (La inmaculada concepción), 2020-12-25 (Navidad del Señor), 2021-01-01 (Año nuevo), 2021-01-06 (Epifanía del Señor).

## Resources

| Resource | Rate | Cost per use |
| --- | --- | --- |
| Cabina básica | 100 |  |
| Cristal grabado con la numeración de la cabina | 12 |  |
| Conjunto de regleta de luz y extractor | 95 |  |
| Pomo con llave diferente para cada cabina | 7.5 |  |
| Cajón para los tarificadores | 10 |  |
| Control principal | 550 |  |
| Carpintero | 35 |  |
| Instalador especializado | 30 |  |
| Ordenador servidor | 1500 | 150 |
| Ordenador gama media | 650 |  |
| Ordenador gama alta | 950 |  |
| Federico González | 29.16 |  |
| Cristina Urrutia | 29.16 |  |
| José Campos | 29.16 |  |
| Gloria Sauciue | 29.16 |  |
| Mike Beer | 22.83 |  |
| Agustín Perez | 22.83 |  |
| Sistema operativo servidor | 300 |  |
| Sistema operativo Terminal | 30 |  |
| Pack Software A | 6 |  |
| Pack Software B | 30 |  |

## Schedule

| ID | WBS | Task | Type | Duration | Start | Finish | Predecessors | Total slack | Free slack | Constraint | Resources | Work | Cost |
| --- | --- | --- | --- | --- | --- | --- | --- | --- | --- | --- | --- | --- | --- |
| 1 | 1 | **Projecto** |  | 34.76d | 2020-11-13 | 2021-01-07 |  | 0d |  |  |  | 1162.98h | 88,321.18 |
| 2 | 1.1 | **Montaje del mobiliario** |  | 10.15d | 2020-11-13 | 2020-11-27 |  | 0.85d |  |  |  | 170.98h | 18,045.35 |
| 3 | 1.1.1 | Montaje de las cabinas |  | 7.62d | 2020-11-13 | 2020-11-24 |  | 0.85d | 0d |  | Cabina básica [5000%]; Carpintero | 79.96h | 8,131.1 |
| 4 | 1.1.2 | Montaje del control principal |  | 2d | 2020-11-24 | 2020-11-26 |  | 1.38d |  | start no earlier than 2020-11-24 | Control principal; Carpintero | 16h | 1,278 |
| 5 | 1.1.3 | Montaje de los accesorios |  | 57.17h | 2020-11-18 | 2020-11-27 | 3SS+3d | 0.85d |  |  | Cajón para los tarificadores [5000%]; Cristal grabado con la numeración de la cabina [5000%]; Conjunto de regleta de luz y extractor [5000%]; Pomo con llave diferente para cada cabina [5000%]; Instalador especializado | 75.02h | 8,636.25 |
| 6 | 1.2 | **Montaje de la Infraestructura de Red y de los Equipos Informáticos** |  | 20.76d | 2020-11-30 | 2020-12-31 | 2FS+1ed | 0d |  |  |  | 40h | 36,454.51 |
| 7 | 1.2.1 | Instalar canaletas |  | 5d | 2020-11-30 | 2020-12-04 |  | 0d |  |  |  |  | 300 |
| 8 | 1.2.2 | Instalar cables |  | 5d | 2020-12-09 | 2020-12-15 | 7 | 0d |  |  |  |  | 400 |
| 9 | 1.2.3 | Instalar tomas de red |  | 3d | 2020-12-16 | 2020-12-18 | 8 | 0d |  |  |  |  | 200 |
| 10 | 1.2.4 | Realización de pruebas |  | 3d | 2020-12-21 | 2020-12-23 | 9 | 0d |  |  |  |  | 500 |
| 11 | 1.2.5 | Montar el servidor |  | 1d | 2020-12-24 | 2020-12-28 | 10 | 0d |  |  | Ordenador servidor; Federico González | 8h | 1,911.27 |
| 12 | 1.2.6 | Montar los ordenadores personales |  | 2.29d | 2020-12-28 | 2020-12-31 | 11 | 0d |  |  | Ordenador gama media [2000%]; Ordenador gama alta [2000%]; Cristina Urrutia; José Campos; Federico González | 32h | 33,143.23 |
| 13 | 1.3 | **Desarrollo de una Aplicación Informática** |  | 31.51d | 2020-11-13 | 2020-12-31 |  | 0.25d |  |  |  | 672h | 22,052.13 |
| 14 | 1.3.1 | **Análisis** |  | 10.65d | 2020-11-13 | 2020-11-27 |  | 0.25d |  |  |  | 304h | 9,404.67 |
| 15 | 1.3.1.1 | Definición del Sistema |  | 24.4h | 2020-11-13 | 2020-11-19 |  | 0.25d | 0d |  | José Campos; Federico González; Gloria Sauciue | 96h | 2,899 |
| 16 | 1.3.1.2 | Establecimiento de Requisitos |  | 36.6h | 2020-11-19 | 2020-11-25 | 15FS-1d | 0.25d | 0d |  | Federico González | 48h | 1,432.85 |
| 17 | 1.3.1.3 | Análisis de Casos de Uso |  | 32h | 2020-11-19 | 2020-11-25 | 15 | 0.83d | 0.57d |  | José Campos | 32h | 933.12 |
| 18 | 1.3.1.4 | Análisis de Clases |  | 36.6h | 2020-11-19 | 2020-11-25 | 15 | 0.25d | 0d |  | Gloria Sauciue | 48h | 1,466.14 |
| 19 | 1.3.1.5 | Identificación de las Interfaces de Usuario |  | 24h | 2020-11-19 | 2020-11-24 | 15 | 1.83d | 1.57d |  | Cristina Urrutia | 24h | 839.76 |
| 20 | 1.3.1.6 | Análisis de Consistencia |  | 8.17h | 2020-11-25 | 2020-11-26 | 16, 17, 18, 19 | 0.25d | 0d |  | José Campos; Federico González; Gloria Sauciue | 32h | 1,017.4 |
| 21 | 1.3.1.7 | Aprobaciuón del Análisis (Analista) |  | 8h | 2020-11-26 | 2020-11-27 | 20 | 0.25d | 0d |  | Cristina Urrutia | 8h | 279.92 |
| 22 | 1.3.1.8 | Aprobación del Anñalisis (Supervisor) |  | 8h | 2020-11-26 | 2020-11-27 | 20 | 0.25d | 0d |  | Federico González; José Campos | 16h | 536.48 |
| 23 | 1.3.2 | **Diseño** |  | 8.15d | 2020-11-27 | 2020-12-11 |  | 0.25d |  |  |  | 176h | 6,203.97 |
| 24 | 1.3.2.1 | Definición de la Arquitectura del Sistema |  | 10.67h | 2020-11-27 | 2020-11-30 | 22, 21 | 0.25d | 0d |  | José Campos; Federico González; Gloria Sauciue | 32h | 1,010.88 |
| 25 | 1.3.2.2 | Diseño de clases (Analista) |  | 24.4h | 2020-11-30 | 2020-12-11 | 24 | 0.25d | 0d |  | Cristina Urrutia | 32h | 1,282.89 |
| 26 | 1.3.2.3 | Diseño de Clases (Programador) |  | 16h | 2020-11-30 | 2020-12-02 | 24 | 4.3d | 4.05d |  | Mike Beer | 16h | 408.66 |
| 27 | 1.3.2.4 | Diseño de los Datos (Analista) |  | 16h | 2020-11-30 | 2020-12-02 | 24 | 4.3d | 4.05d |  | Federico González; José Campos | 32h | 1,043.93 |
| 28 | 1.3.2.5 | Diseño de los Datos (Programador) |  | 32h | 2020-11-30 | 2020-12-04 | 24 | 2.3d | 2.05d |  | Gloria Sauciue | 32h | 1,305.64 |
| 29 | 1.3.2.6 | Verificación del Diseño (Analista) |  | 6.1h | 2020-12-11 | 2020-12-11 | 26, 28, 25, 27 | 0.25d | 0d |  | Cristina Urrutia | 8h | 320.96 |
| 30 | 1.3.2.7 | Verificación del Diseño (Programador) |  | 6.1h | 2020-12-11 | 2020-12-11 | 26, 28, 25, 27 | 0.25d | 0d |  | Mike Beer | 8h | 211.86 |
| 31 | 1.3.2.8 | Verificación del Diseño (Supervisor) |  | 6.1h | 2020-12-11 | 2020-12-11 | 26, 28, 25, 27 | 0.25d | 0d |  | Federico González; José Campos | 16h | 619.16 |
| 32 | 1.3.2.9 | Finalización del Diseño | milestone | 0d | 2020-12-11 | 2020-12-11 | 29, 30, 31 | 12.97d |  |  |  |  |  |

| ID | WBS | Task | Type | Duration | Start | Finish | Predecessors | Total slack | Free slack | Constraint | Resources | Work | Cost |
| --- | --- | --- | --- | --- | --- | --- | --- | --- | --- | --- | --- | --- | --- |
| 33 | 1.3.3 | **Construcción** |  | 7.72d | 2020-12-11 | 2020-12-23 |  | 0.25d |  |  |  | 128h | 4,318.9 |
| 34 | 1.3.3.1 | Codificación de clases |  | 32h | 2020-12-11 | 2020-12-17 | 31, 29, 30 | 0.25d | 0d |  | Gloria Sauciue; Mike Beer | 64h | 2,124.6 |
| 35 | 1.3.3.2 | Integración del Sistema |  | 16h | 2020-12-17 | 2020-12-21 | 34 | 0.25d | 0d |  | Gloria Sauciue; Mike Beer | 32h | 1,062.3 |
| 36 | 1.3.3.3 | Aprobación del Sistema (Programador) |  | 8h | 2020-12-21 | 2020-12-22 | 35 | 0.97d | 0.72d |  | Gloria Sauciue; Mike Beer | 16h | 531.15 |
| 37 | 1.3.3.4 | Aprobación del Sistema (Supervisor) |  | 8h | 2020-12-21 | 2020-12-23 | 35 | 0.25d | 0d |  | Federico González; José Campos | 16h | 600.86 |
| 38 | 1.3.3.5 | Aprobación del Sistema | milestone | 0d | 2020-12-23 | 2020-12-23 | 36, 37 | 5.25d |  |  |  |  |  |
| 39 | 1.3.4 | **Pruebas** |  | 5d | 2020-12-23 | 2020-12-31 |  | 0.25d |  |  |  | 64h | 2,124.6 |
| 40 | 1.3.4.1 | Ejecución Pruebas Unitarias |  | 16h | 2020-12-23 | 2020-12-28 | 37, 36 | 0.25d | 0d |  | Gloria Sauciue; Mike Beer | 32h | 1,062.3 |
| 41 | 1.3.4.2 | Ejecución de las pruebas de Integración |  | 16h | 2020-12-28 | 2020-12-31 | 40 | 0.25d |  |  | Gloria Sauciue; Mike Beer | 32h | 1,062.3 |
| 42 | 1.4 | **Instalación del Software y Prueba del Sistema** |  | 3d | 2020-12-31 | 2021-01-07 | 2, 6, 13 | 0d |  |  |  | 112h | 6,061.84 |
| 43 | 1.4.1 | Instalar Sistema Operativo |  | 4.8h | 2020-12-31 | 2021-01-04 |  | 0d |  |  | Sistema operativo servidor; Sistema operativo Terminal [4000%]; Cristina Urrutia; Federico González; José Campos; Mike Beer; Gloria Sauciue | 24h | 2,320.32 |
| 44 | 1.4.2 | Instalar paquete soft tipo A |  | 8h | 2021-01-04 | 2021-01-05 | 43 | 0d |  |  | Pack Software A [2000%]; Federico González; Gloria Sauciue | 16h | 707.87 |
| 45 | 1.4.3 | Instalar paquete soft tipo B |  | 5.33h | 2021-01-04 | 2021-01-05 | 43 | 0.33d |  |  | Pack Software B [2000%]; José Campos; Mike Beer; Cristina Urrutia | 16h | 1,119.56 |
| 46 | 1.4.4 | Aplicación ETSISOFT |  | 4.8h | 2021-01-05 | 2021-01-05 | 44, 45 | 0d |  |  | Cristina Urrutia; Federico González; Gloria Sauciue; José Campos; Mike Beer | 24h | 820.32 |
| 47 | 1.4.5 | Prueba Global del Sistema |  | 6.4h | 2021-01-05 | 2021-01-07 | 46 | 0d |  |  | Federico González; Cristina Urrutia; Gloria Sauciue; José Campos; Mike Beer | 32h | 1,093.77 |
| 48 | 1.5 | **Reunión** |  | 28d | 2020-11-17 | 2020-12-29 |  | 4.76d |  |  |  | 96h | 3,439.87 |
| 49 | 1.5.1 | Reunión 1 |  | 1d | 2020-11-17 | 2020-11-17 |  | 31.76d |  | start no earlier than 2020-11-17 | Federico González; Gloria Sauciue; José Campos; Mike Beer | 32h | 1,032.48 |
| 50 | 1.5.2 | Reunión 2 |  | 1d | 2020-12-09 | 2020-12-09 |  | 17.76d |  | start no earlier than 2020-12-08 | Federico González; Gloria Sauciue; José Campos; Mike Beer | 32h | 1,203.7 |
| 51 | 1.5.3 | Reunión 3 |  | 1d | 2020-12-29 | 2020-12-29 |  | 4.76d |  | start no earlier than 2020-12-29 | Federico González; Gloria Sauciue; Mike Beer; José Campos | 32h | 1,203.7 |
| 52 | 1.6 | **Reunión JP** |  | 30d | 2020-11-16 | 2020-12-30 |  | 3.76d |  |  |  | 72h | 2,267.48 |
| 53 | 1.6.1 | Reunión JP 1 |  | 3d | 2020-11-16 | 2020-11-18 |  | 30.76d |  | start no earlier than 2020-11-16 | Cristina Urrutia | 24h | 699.84 |
| 54 | 1.6.2 | Reunión JP 2 |  | 3d | 2020-12-04 | 2020-12-10 |  | 16.76d |  | start no earlier than 2020-12-04 | Cristina Urrutia | 24h | 783.82 |
| 55 | 1.6.3 | Reunión JP 3 |  | 3d | 2020-12-28 | 2020-12-30 |  | 3.76d |  | start no earlier than 2020-12-28 | Cristina Urrutia | 24h | 783.82 |
