# Punto 1 Asignación

Schedule from MS Project, 2020-11-16 to 2021-02-11, status date 2020-12-07, costs in €, A marks actual dates.

## Calendars

- Calendario de la ETSI: Mon-Fri 09:00-13:00, 15:00-19:00; Sat-Sun off. Exceptions (off unless hours are given): 2020-12-07 (Día de la constitución), 2020-12-08 (Día de la Inmaculada concepción), 2020-12-24 to 2021-01-06 (Navidad).

## Resources

| Resource | Rate |
| --- | --- |
| Jefe A | 41.98 |
| Analista W | 33.16 |
| Analista D | 29.6 |
| Analista P | 26.05 |
| Administrativo | 19.76 |
| Programador J | 17.39 |

## Schedule

| ID | WBS | Task | Duration | Start | Finish | Predecessors | Complete | Remaining | Baseline start | Baseline finish | Baseline duration | Total slack | Free slack | Resources | Work | Actual work | Cost | Baseline cost | Actual cost |
| --- | --- | --- | --- | --- | --- | --- | --- | --- | --- | --- | --- | --- | --- | --- | --- | --- | --- | --- | --- |
| 1 | 1 | **Projecto** | 51.81d | 2020-11-16 A | 2021-02-11 |  | 25% | 38.99d | 2020-11-16 | 2021-02-01 | 43.81d | 0d |  |  | 1184h | 280h | 33,632.79 | 29,732.79 | 9,713.73 |
| 2 | 1.1 | **Requerimientos de los usuarios** | 6d | 2020-11-16 A | 2020-11-23 A |  | 100% |  | 2020-11-16 | 2020-11-23 | 6d |  |  |  | 48h | 48h | 1,662.24 | 1,662.24 | 1,662.24 |
| 3 | 1.1.1 | Toma de requisitos de usuario | 5d | 2020-11-16 A | 2020-11-20 A |  | 100% |  | 2020-11-16 | 2020-11-20 | 5d |  |  | Analista W | 40h | 40h | 1,326.4 | 1,326.4 | 1,326.4 |
| 4 | 1.1.2 | Validación de los requisitos de usuario | 1d | 2020-11-23 A | 2020-11-23 A | 3 | 100% |  | 2020-11-23 | 2020-11-23 | 1d |  |  | Jefe A | 8h | 8h | 335.84 | 335.84 | 335.84 |
| 5 | 1.2 | **Análisis de requisitos del Software** | 19d | 2020-11-16 A | 2020-12-14 |  | 82% | 3.45d | 2020-11-16 | 2020-11-27 | 10d | 0d |  |  | 216h | 184h | 7,435.68 | 3,535.68 | 6,482.01 |
| 6 | 1.2.1 | Estudio de los requisitos Software | 3d | 2020-11-16 A | 2020-11-18 A |  | 100% |  | 2020-11-16 | 2020-11-18 | 3d |  |  | Analista D; Analista P | 48h | 48h | 1,335.6 | 1,335.6 | 1,335.6 |
| 7 | 1.2.2 | Validación de los requisitos Software | 1d | 2020-11-19 A | 2020-11-19 A | 6 | 100% |  | 2020-11-19 | 2020-11-19 | 1d |  |  | Jefe A | 8h | 8h | 335.84 | 335.84 | 335.84 |
| 8 | 1.2.3 | Instalación del Software necesario en los PCs | 13d | 2020-11-20 A | 2020-12-10 | 7 | 85% | 2d | 2020-11-20 | 2020-11-25 | 4d | 0d |  | Programador J | 104h | 88h | 4,456.48 | 556.48 | 3,781.05 |
| 9 | 1.2.4 | Preparación de los puestos de trabajo | 2d | 2020-12-11 | 2020-12-14 | 8 |  |  | 2020-11-26 | 2020-11-27 | 2d | 0d |  | Programador J | 16h |  | 278.24 | 278.24 |  |
| 10 | 1.2.5 | Preparación del servidor de desarrollo | 2d | 2020-11-19 A | 2020-11-20 A | 6 | 100% |  | 2020-11-19 | 2020-11-20 | 2d |  |  | Analista D; Analista P | 32h | 32h | 890.4 | 890.4 | 890.4 |
| 11 | 1.2.6 | Preparación del servidor de preexplotación | 1d | 2020-11-19 A | 2020-11-19 A | 6 | 100% |  | 2020-11-19 | 2020-11-19 | 1d |  |  | Programador J | 8h | 8h | 139.12 | 139.12 | 139.12 |
| 12 | 1.3 | **Análisis de requistos del Sistema** | 3d | 2020-11-24 A | 2020-11-26 A |  | 100% |  | 2020-11-24 | 2020-11-26 | 3d |  |  |  | 48h | 48h | 1,569.48 | 1,569.48 | 1,569.48 |
| 13 | 1.3.1 | Estimación de Hardware necesario | 12h | 2020-11-24 A | 2020-11-25 A | 4 | 100% |  | 2020-11-24 | 2020-11-25 | 12h |  |  | Analista D; Analista P | 24h | 24h | 667.8 | 667.8 | 667.8 |
| 14 | 1.3.2 | Validación del hardware necesario (T) | 12h | 2020-11-25 A | 2020-11-26 A | 13 | 100% |  | 2020-11-25 | 2020-11-26 | 12h |  |  | Analista W | 12h | 12h | 397.92 | 397.92 | 397.92 |
| 15 | 1.3.3 | Validación de hardware necesario (JP) | 12h | 2020-11-25 A | 2020-11-26 A | 13 | 100% |  | 2020-11-25 | 2020-11-26 | 12h |  |  | Jefe A | 12h | 12h | 503.76 | 503.76 | 503.76 |
| 16 | 1.4 | **Diseño Preliminar** | 8d | 2020-12-15 | 2021-01-07 |  |  |  | 2020-11-30 | 2020-12-11 | 8d | 0d |  |  | 112h |  | 4,008.48 | 4,008.48 |  |
| 17 | 1.4.1 | Diseño de los datos y procesos | 6d | 2020-12-15 | 2020-12-22 | 2, 5, 12 |  |  | 2020-11-30 | 2020-12-09 | 6d | 0d |  | Analista D; Jefe A | 96h |  | 3,435.84 | 3,435.84 |  |
| 18 | 1.4.2 | Diseño del plan de pruebas (D) | 1d | 2020-12-23 | 2020-12-23 | 17 |  |  | 2020-12-10 | 2020-12-10 | 1d | 26.81d |  | Analista D | 8h |  | 236.8 | 236.8 |  |
| 19 | 1.4.3 | Diseño del plan de pruebas (JP) | 1d | 2021-01-07 | 2021-01-07 | 17 |  |  | 2020-12-11 | 2020-12-11 | 1d | 25.81d |  | Jefe A | 8h |  | 335.84 | 335.84 |  |
| 20 | 1.5 | **Diseño Detallado** | 9d | 2020-12-23 | 2021-01-18 |  |  |  | 2020-12-10 | 2020-12-22 | 9d | 17.81d | 0d |  | 136h |  | 4,185.6 | 4,185.6 |  |
| 21 | 1.5.1 | Diseño gráfico de la aplicación | 5d | 2020-12-23 | 2021-01-12 | 17 |  |  | 2020-12-10 | 2020-12-16 | 5d | 22.81d |  | Analista W | 40h |  | 1,326.4 | 1,326.4 |  |
| 22 | 1.5.2 | **Diseño Técnico de componentes** | 9d | 2020-12-23 | 2021-01-18 |  |  |  | 2020-12-10 | 2020-12-22 | 9d | 17.81d |  |  | 96h |  | 2,859.2 | 2,859.2 |  |
| 23 | 1.5.2.1 | Presentación | 1d | 2020-12-23 | 2020-12-23 | 17 |  |  | 2020-12-10 | 2020-12-10 | 1d | 26.81d |  | Jefe A | 8h |  | 335.84 | 335.84 |  |
| 24 | 1.5.2.2 | Mantenimiento de la Explotación pesquera | 2d | 2021-01-07 | 2021-01-08 | 17 |  |  | 2020-12-14 | 2020-12-15 | 2d | 24.81d |  | Programador J | 16h |  | 278.24 | 278.24 |  |
| 25 | 1.5.2.3 | Mantenimiento de Historial; Reservas, Tarifas y Eventos | 4d | 2021-01-13 | 2021-01-18 | 17 |  |  | 2020-12-17 | 2020-12-22 | 4d | 17.81d |  | Analista W | 32h |  | 1,061.12 | 1,061.12 |  |
| 26 | 1.5.2.4 | Localización | 5d | 2021-01-07 | 2021-01-13 | 17 |  |  | 2020-12-11 | 2020-12-17 | 5d | 20.81d |  | Analista D | 40h |  | 1,184 | 1,184 |  |

| ID | WBS | Task | Type | Duration | Start | Finish | Predecessors | Baseline start | Baseline finish | Baseline duration | Total slack | Free slack | Resources | Work | Cost | Baseline cost |
| --- | --- | --- | --- | --- | --- | --- | --- | --- | --- | --- | --- | --- | --- | --- | --- | --- |
| 27 | 1.6 | **Diseño de la Base de Datos** |  | 7d | 2021-01-08 | 2021-01-18 |  | 2020-12-14 | 2020-12-21 | 6d | 14.81d | 0d |  | 48h | 1,816.96 | 1,816.96 |
| 28 | 1.6.1 | Diseño de Tablas y Relaciones |  | 3d | 2021-01-08 | 2021-01-12 | 17 | 2020-12-14 | 2020-12-16 | 3d | 14.81d | 0d | Jefe A | 24h | 1,007.52 | 1,007.52 |
| 29 | 1.6.2 | Validación del diseño de la BD (D) |  | 2d | 2021-01-15 | 2021-01-18 | 28 | 2020-12-18 | 2020-12-21 | 2d | 14.81d | 0d | Analista D | 16h | 473.6 | 473.6 |
| 30 | 1.6.3 | Validación del diseño de la BD (JP) |  | 1d | 2021-01-13 | 2021-01-13 | 28 | 2020-12-17 | 2020-12-17 | 1d | 17.81d | 3d | Jefe A | 8h | 335.84 | 335.84 |
| 31 | 1.7 | Entrega del diseño de la aplicación | milestone | 0d | 2021-01-18 | 2021-01-18 | 16, 20, 27 | 2020-12-22 | 2020-12-22 | 0d | 17.81d |  |  |  |  |  |
| 32 | 1.8 | **Construcción** |  | 28.81d | 2020-12-21 | 2021-02-11 |  | 2020-12-04 | 2021-01-15 | 18.81d | 0d |  |  | 312h | 7,340.43 | 7,340.43 |
| 33 | 1.8.1 | Construcción del Prototipo |  | 3d | 2020-12-22 | 2021-02-11 | 17SS+5d | 2020-12-09 | 2020-12-11 | 3d | 0d |  | Programador J | 24h | 417.36 | 417.36 |
| 34 | 1.8.2 | Construcción de la BD (D) |  | 3d | 2021-01-19 | 2021-01-21 | 30, 29 | 2020-12-22 | 2021-01-07 | 3d | 14.81d |  | Jefe A | 24h | 1,007.52 | 1,007.52 |
| 35 | 1.8.3 | Construcción de la BD (P) |  | 2d | 2021-01-19 | 2021-01-20 | 30, 29 | 2020-12-22 | 2020-12-23 | 2d | 15.81d |  | Programador J | 16h | 278.24 | 278.24 |
| 36 | 1.8.4 | Codificación |  | 16.62d | 2020-12-21 | 2021-01-27 | 17FS-2d | 2020-12-04 | 2021-01-15 | 14.81d | 0d |  | Analista P; Programador J | 248h | 5,637.31 | 5,637.31 |
| 37 | 1.9 | **Pruebas** |  | 6d | 2021-01-27 | 2021-02-04 |  | 2021-01-15 | 2021-01-25 | 6d | 0d |  |  | 96h | 2,085.12 | 2,085.12 |
| 38 | 1.9.1 | Pruebas Unitarias |  | 1.5d | 2021-01-27 | 2021-01-29 | 36 | 2021-01-15 | 2021-01-19 | 1.5d | 0d |  | Programador J; Analista P | 24h | 521.28 | 521.28 |
| 39 | 1.9.2 | Pruebas de Integración |  | 1d | 2021-01-29 | 2021-02-01 | 38 | 2021-01-19 | 2021-01-20 | 1d | 0d |  | Programador J; Analista P | 16h | 347.52 | 347.52 |
| 40 | 1.9.3 | Pruebas de Sistema |  | 3.5d | 2021-02-01 | 2021-02-04 | 39 | 2021-01-20 | 2021-01-25 | 3.5d | 0d |  | Programador J; Analista P | 56h | 1,216.32 | 1,216.32 |
| 41 | 1.10 | **Demostración a los usuarios** |  | 5d | 2021-02-04 | 2021-02-11 |  | 2021-01-25 | 2021-02-01 | 5d | 0d |  |  | 48h | 1,157.6 | 1,157.6 |
| 42 | 1.10.1 | Entrenamiento de usuarios |  | 32h | 2021-02-04 | 2021-02-10 | 40 | 2021-01-25 | 2021-01-29 | 32h | 0d |  | Programador J | 32h | 556.48 | 556.48 |
| 43 | 1.10.2 | Validación del producto por los usuarios (JP) |  | 1d | 2021-02-10 | 2021-02-11 | 42 | 2021-01-29 | 2021-02-01 | 1d | 0d |  | Jefe A | 8h | 335.84 | 335.84 |
| 44 | 1.10.3 | Validación del producto por los usuarios (A) |  | 1d | 2021-02-10 | 2021-02-11 | 42 | 2021-01-29 | 2021-02-01 | 1d | 0d |  | Analista W | 8h | 265.28 | 265.28 |
| 45 | 1.11 | Aceptación del Producto por parte del cliente | milestone | 0d | 2021-02-11 | 2021-02-11 | 44 | 2021-02-01 | 2021-02-01 | 0d | 0d |  |  |  |  |  |
| 46 | 1.12 | **Documentación** |  | 20.5d | 2021-01-13 | 2021-02-11 |  | 2020-12-18 | 2021-02-01 | 20.5d | 0.5d |  |  | 120h | 2,371.2 | 2,371.2 |
| 47 | 1.12.1 | Documentación técnica de proyecto |  | 10d | 2021-01-13 | 2021-01-27 | 36FF | 2020-12-18 | 2021-01-15 | 10d | 11d |  | Administrativo | 80h | 1,580.8 | 1,580.8 |
| 48 | 1.12.2 | Documentación de usuarios |  | 5d | 2021-02-04 | 2021-02-11 | 39FS+3d | 2021-01-25 | 2021-02-01 | 5d | 0.5d |  | Administrativo | 40h | 790.4 | 790.4 |
