# Practica 1 - Parte 1

Schedule from MS Project, 2020-11-13 to 2021-01-05, costs in €.

## Calendars

- Calendario de Huelva: Mon-Fri 09:00-13:00, 15:00-19:00; Sat-Sun off. Exceptions (off unless hours are given): 2020-12-07 (Día de la Constitución), 2020-12-08 (Día de la Inmaculada), 2020-12-25 (Navidad), 2021-01-01 (Año nuevo).

## Resources

| Resource | Rate | Cost per use |
| --- | --- | --- |
| Cabina básica | 100 |  |
| Cristal grabado con numeración de la cabina | 12 |  |
| Conjunto de regleta de luz y extrator | 95 |  |
| Pomo con llave diferente para cabina | 7.5 |  |
| Cajon para los tarificadores | 10 |  |
| Control principal | 550 |  |
| Carpintero | 35 |  |
| Instalador especializado | 30 |  |
| Ordenador Servidor | 1500 | 150 |
| Ordenador gama media | 650 |  |
| Ordenador gama alta | 950 |  |
| Federico González | 29.16 |  |
| Cristina Urrutia | 29.16 |  |
| José Campos | 29.16 |  |
| Gloria Sauciuc | 29.16 |  |
| Mike Beer | 22.83 |  |
| Agustin Perez | 22.83 |  |
| Sistema Operativo Servidor | 300 |  |
| Sistema Operativo Terminal | 30 |  |
| Pack Software A | 6 |  |
| Pack Software B | 30 |  |

## Schedule

| ID | WBS | Task | Type | Duration | Start | Finish | Predecessors | Total slack | Free slack | Constraint | Resources | Work | Cost |
| --- | --- | --- | --- | --- | --- | --- | --- | --- | --- | --- | --- | --- | --- |
| 1 | 1 | **Proyecto** |  | 33.93d | 2020-11-13 | 2021-01-05 |  | 0d |  |  |  | 1171.78h | 89,353.08 |
| 2 | 1.1 | **Montaje del mobiliario** |  | 10.15d | 2020-11-13 | 2020-11-27 |  | 0.85d |  |  |  | 170.98h | 18,045.35 |
| 3 | 1.1.1 | Montaje de las cabinas |  | 7.62d | 2020-11-13 | 2020-11-24 |  | 0.85d | 0d |  | Cabina básica [5000%]; Carpintero | 79.96h | 8,131.1 |
| 4 | 1.1.2 | Montaje del control principal |  | 2d | 2020-11-24 | 2020-11-26 |  | 1.38d |  | start no earlier than 2020-11-23 | Control principal; Carpintero | 16h | 1,278 |
| 5 | 1.1.3 | Montaje de los accesorios |  | 57.17h | 2020-11-18 | 2020-11-27 | 3SS+3d | 0.85d |  |  | Cristal grabado con numeración de la cabina [5000%]; Pomo con llave diferente para cabina [5000%]; Conjunto de regleta de luz y extrator [5000%]; Cajon para los tarificadores [5000%]; Instalador especializado | 75.02h | 8,636.25 |
| 6 | 1.2 | **Montaje de la Infraestructura de Red y de los Equipos Informáticos** |  | 20.86d | 2020-11-30 | 2020-12-31 | 2FS+1ed | 0d |  |  |  | 40h | 36,472.13 |
| 7 | 1.2.1 | Instalar canaletas |  | 5d | 2020-11-30 | 2020-12-04 |  | 0d |  |  |  |  | 300 |
| 8 | 1.2.2 | Instalar cables |  | 5d | 2020-12-09 | 2020-12-15 | 7 | 0d |  |  |  |  | 400 |
| 9 | 1.2.3 | Instalar tomas de red |  | 3d | 2020-12-16 | 2020-12-18 | 8 | 0d |  |  |  |  | 200 |
| 10 | 1.2.4 | Realizacion de pruebas |  | 3d | 2020-12-21 | 2020-12-23 | 9 | 0d |  |  |  |  | 500 |
| 11 | 1.2.5 | Montar el Servidor |  | 1d | 2020-12-24 | 2020-12-24 | 10 | 0d |  |  | Ordenador Servidor; Federico González | 8h | 1,911.27 |
| 12 | 1.2.6 | Montar los ordenadores personales |  | 1.73d | 2020-12-28 | 2020-12-31 | 11 | 0d |  | start no earlier than 2020-12-24 | Ordenador gama alta [2000%]; Ordenador gama media [2000%]; Cristina Urrutia; José Campos; Federico González | 32h | 33,160.85 |
| 13 | 1.3 | **Desarrollo de una Aplicación informatica** |  | 28.67d | 2020-11-13 | 2020-12-28 |  | 3.04d |  |  |  | 656.8h | 22,531.8 |
| 14 | 1.3.1 | **Analisis** |  | 11.86d | 2020-11-13 | 2020-11-30 |  | 3.04d |  |  |  | 296.4h | 10,377.78 |
| 15 | 1.3.1.1 | Definicion del Sistema |  | 21.47h | 2020-11-13 | 2020-11-19 |  | 3.04d | 0d |  | Gloria Sauciuc; Federico González; José Campos; Agustin Perez; Cristina Urrutia; Mike Beer | 88.4h | 3,149.84 |
| 16 | 1.3.1.2 | Establecimiento de Requisitos |  | 24h | 2020-11-19 | 2020-11-23 | 15FS-1d | 6.04d | 2.84d | start no earlier than 2020-11-19 | Federico González; Agustin Perez | 48h | 1,795.68 |
| 17 | 1.3.1.3 | Analaisis de Casos de Uso |  | 32h | 2020-11-19 | 2020-11-26 | 15 | 3.2d | 0d |  | José Campos | 32h | 933.12 |
| 18 | 1.3.1.4 | Analisis de Clases |  | 24h | 2020-11-19 | 2020-11-25 | 15 | 4.2d | 1d |  | Gloria Sauciuc; Mike Beer | 48h | 1,795.68 |
| 19 | 1.3.1.5 | Identificación de las interfaces de Usuario |  | 24h | 2020-11-23 | 2020-11-25 | 15 | 4.04d | 0.84d |  | Cristina Urrutia | 24h | 839.76 |
| 20 | 1.3.1.6 | Analisis de la consistencia |  | 8.17h | 2020-11-26 | 2020-11-27 | 16, 17, 18, 19 | 3.2d | 0d |  | José Campos; Federico González; Gloria Sauciuc | 32h | 1,047.3 |
| 21 | 1.3.1.7 | Aprobacion del analisis Supervisor |  | 8h | 2020-11-27 | 2020-11-30 | 20 | 3.2d | 0d |  | Federico González; José Campos | 16h | 536.48 |
| 22 | 1.3.1.8 | Apobacion del analisis analista |  | 8h | 2020-11-27 | 2020-11-30 | 20 | 3.2d | 0d |  | Cristina Urrutia | 8h | 279.92 |
| 23 | 1.3.2 | **Diseño** |  | 7.1d | 2020-11-30 | 2020-12-11 |  | 3.2d |  |  |  | 168.4h | 6,035.95 |
| 24 | 1.3.2.1 | Definicion de la Arquitectura del Sistema |  | 10.67h | 2020-11-30 | 2020-12-02 | 21, 22 | 3.2d | 0d |  | José Campos; Federico González; Gloria Sauciuc | 32h | 1,119.68 |
| 25 | 1.3.2.2 | Diseño de clases Analista |  | 24.4h | 2020-12-02 | 2020-12-10 | 24 | 4.15d | 0.95d |  | Agustin Perez | 24.4h | 1,247.8 |
| 26 | 1.3.2.3 | Diseño de Clases Programador |  | 16h | 2020-12-04 | 2020-12-11 | 24 | 3.2d | 0d |  | Mike Beer | 16h | 409.11 |
| 27 | 1.3.2.4 | Diseño de los Datos Analista |  | 16h | 2020-12-02 | 2020-12-04 | 24 | 6.2d | 3d |  | Federico González; José Campos | 32h | 1,045.09 |
| 28 | 1.3.2.5 | Diseño de los Datos Programador |  | 16h | 2020-12-02 | 2020-12-04 | 24 | 6.2d | 3d |  | Gloria Sauciuc; Mike Beer | 32h | 1,062.3 |
| 29 | 1.3.2.6 | Verificación del Diseño Analista |  | 6.1h | 2020-12-11 | 2020-12-11 | 26, 27, 25, 28 | 3.2d | 0d |  | Cristina Urrutia | 8h | 320.96 |
| 30 | 1.3.2.7 | Verificacion del Diseño Programador |  | 6.1h | 2020-12-11 | 2020-12-11 | 26, 27, 25, 28 | 3.2d | 0d |  | Mike Beer | 8h | 211.86 |
| 31 | 1.3.2.8 | Verificación del Diseño Supervisor |  | 6.1h | 2020-12-11 | 2020-12-11 | 26, 28, 25, 27 | 3.2d | 0d |  | Federico González; José Campos | 16h | 619.16 |
| 32 | 1.3.2.9 | Finalización del Diseño | milestone | 0d | 2020-12-11 | 2020-12-11 | 29, 30, 31 | 12.9d |  |  |  |  |  |

| ID | WBS | Task | Type | Duration | Start | Finish | Predecessors | Total slack | Free slack | Constraint | Resources | Work | Cost |
| --- | --- | --- | --- | --- | --- | --- | --- | --- | --- | --- | --- | --- | --- |
| 33 | 1.3.3 | **Construccion** |  | 6.38d | 2020-12-11 | 2020-12-22 |  | 3.2d |  |  |  | 128h | 4,074.83 |
| 34 | 1.3.3.1 | Codificación de las clases |  | 21.33h | 2020-12-11 | 2020-12-17 | 31, 29, 30 | 3.2d | 0d |  | Mike Beer; Gloria Sauciuc; Agustin Perez | 64h | 1,961.88 |
| 35 | 1.3.3.2 | Integración del Sistema |  | 10.67h | 2020-12-18 | 2020-12-21 | 34 | 3.2d | 0d |  | Mike Beer; Gloria Sauciuc; Agustin Perez | 32h | 980.94 |
| 36 | 1.3.3.3 | Aprobacion del Sistema Programador |  | 8h | 2020-12-21 | 2020-12-22 | 35 | 6.53d | 0d |  | Gloria Sauciuc; Mike Beer | 16h | 531.15 |
| 37 | 1.3.3.4 | Aprobación del Sistema Supervisor |  | 8h | 2020-12-21 | 2020-12-22 | 35 | 3.2d | 0d |  | Federico González; José Campos | 16h | 600.86 |
| 38 | 1.3.3.5 | Aprobación del Sistema | milestone | 0d | 2020-12-22 | 2020-12-22 | 36, 37 | 6.53d |  |  |  |  |  |
| 39 | 1.3.4 | **Pruebas** |  | 3.33d | 2020-12-22 | 2020-12-28 |  | 3.2d |  |  |  | 64h | 2,043.24 |
| 40 | 1.3.4.1 | Ejecución Pruebas Unitarias |  | 16h | 2020-12-22 | 2020-12-24 | 37 | 3.2d | 0d |  | Gloria Sauciuc; Mike Beer | 32h | 1,062.3 |
| 41 | 1.3.4.2 | Ejecución de las pruebas de Integración |  | 10.67h | 2020-12-24 | 2020-12-28 | 40 | 3.2d |  |  | Mike Beer; Gloria Sauciuc; Agustin Perez | 32h | 980.94 |
| 42 | 1.4 | **Instalación del Software y Pruebas del Sistema** |  | 2.07d | 2020-12-31 | 2021-01-05 | 2, 6, 13 | 0d |  |  |  | 112h | 6,004.71 |
| 43 | 1.4.1 | Instalar Sistema Operativo |  | 3.1h | 2020-12-31 | 2021-01-04 |  | 0d |  |  | Sistema Operativo Servidor; Sistema Operativo Terminal [4000%]; Federico González; Cristina Urrutia; Gloria Sauciuc; José Campos; Mike Beer; Agustin Perez | 24h | 2,311.01 |
| 44 | 1.4.2 | Instalar paquete soft tipo A |  | 4.13h | 2021-01-04 | 2021-01-05 | 43 | 0d |  |  | Pack Software A [2000%]; Gloria Sauciuc; Federico González; Agustin Perez | 16h | 666.6 |
| 45 | 1.4.3 | Instalar paquete soft tipo B |  | 4.13h | 2021-01-04 | 2021-01-05 | 43 | 0d |  |  | Pack Software B [2000%]; José Campos; Mike Beer; Cristina Urrutia | 16h | 1,134.75 |
| 46 | 1.4.4 | Aplicación ETSISOFT |  | 3.1h | 2021-01-05 | 2021-01-05 | 44, 45 | 0d |  |  | Cristina Urrutia; Gloria Sauciuc; Federico González; José Campos; Mike Beer; Agustin Perez | 24h | 811.01 |
| 47 | 1.4.5 | Prueba Global del Sistema |  | 4.13h | 2021-01-05 | 2021-01-05 | 46 | 0d |  |  | Cristina Urrutia; Gloria Sauciuc; José Campos; Federico González; Mike Beer; Agustin Perez | 32h | 1,081.34 |
| 48 | 1.5 | **Reunión** |  | 28d | 2020-11-17 | 2020-12-29 |  | 3.93d |  |  |  | 120h | 4,031.63 |
| 49 | 1.5.1 | Reunión 1 |  | 1d | 2020-11-17 | 2020-11-17 |  | 30.93d |  | start no earlier than 2020-11-17 | Federico González; Gloria Sauciuc; José Campos; Mike Beer; Agustin Perez | 40h | 1,215.12 |
| 50 | 1.5.2 | Reunión 2 |  | 1d | 2020-12-09 | 2020-12-09 |  | 16.93d |  | start no earlier than 2020-12-08 | Gloria Sauciuc; Federico González; José Campos; Mike Beer; Agustin Perez | 40h | 1,408.25 |
| 51 | 1.5.3 | Reunión 3 |  | 1d | 2020-12-29 | 2020-12-29 |  | 3.93d |  | start no earlier than 2020-12-29 | José Campos; Mike Beer; Federico González; Gloria Sauciuc; Agustin Perez | 40h | 1,408.25 |
| 52 | 1.6 | **Reunión JP** |  | 30d | 2020-11-16 | 2020-12-30 |  | 2.93d |  |  |  | 72h | 2,267.48 |
| 53 | 1.6.1 | Reunión JP 1 |  | 3d | 2020-11-16 | 2020-11-18 |  | 29.93d |  | start no earlier than 2020-11-16 | Cristina Urrutia | 24h | 699.84 |
| 54 | 1.6.2 | Reunión JP 2 |  | 3d | 2020-12-04 | 2020-12-10 |  | 15.93d |  | start no earlier than 2020-12-04 | Cristina Urrutia | 24h | 783.82 |
| 55 | 1.6.3 | Reunión JP 3 |  | 3d | 2020-12-28 | 2020-12-30 |  | 2.93d |  | start no earlier than 2020-12-28 | Cristina Urrutia | 24h | 783.82 |
